# 소공원 R1 · WBS 기준 공정

Schedule from an IFC model, 2026-09-28 to 2026-11-18.
소공원 R1 · 식재·시설물·WBS 공정 통합

## Schedule

| ID | Activity | Duration | Start | Finish | Predecessors | Resources |
| --- | --- | --- | --- | --- | --- | --- |
| PK | **소공원 조성공사** | 0d | 2026-09-28 | 2026-11-18 |  |  |
| PK.10 | **표토·일반토공** | 0d | 2026-09-28 | 2026-10-05 |  |  |
| PK.10.10 | **표토 제거** | 0d | 2026-09-28 | 2026-10-01 |  |  |
| PK.10.10.SITE | 표토 제거 / 전체 | 0d | 2026-09-28 | 2026-10-01 |  | earth_crew; excavator; truck |
| PK.10.20 | **일반토공·정지** | 0d | 2026-10-01 | 2026-10-05 |  |  |
| PK.10.20.SITE | 일반토공·정지 / 전체 | 0d | 2026-10-01 | 2026-10-05 | PK.10.10.SITE | earth_crew; excavator; truck |
| PK.20 | **우배수공** | 0d | 2026-10-05 | 2026-10-14 |  |  |
| PK.20.05 | **배수 기준고·관저고 측량** | 0d | 2026-10-05 | 2026-10-06 |  |  |
| PK.20.05.SITE | 배수 기준고·관저고 측량 / 전체 | 0d | 2026-10-05 | 2026-10-06 | PK.10.20.SITE | inspector; earth_crew |
| PK.20.10 | **관로·집수정 굴착** | 0d | 2026-10-06 | 2026-10-07 |  |  |
| PK.20.10.A | 관로·집수정 굴착 / A구역 | 0d | 2026-10-06 | 2026-10-06 | PK.20.05.SITE | earth_crew; excavator; truck |
| PK.20.10.B | 관로·집수정 굴착 / B구역 | 0d | 2026-10-06 | 2026-10-06 | PK.20.05.SITE | earth_crew; excavator; truck |
| PK.20.10.C | 관로·집수정 굴착 / C구역 | 0d | 2026-10-06 | 2026-10-06 | PK.20.05.SITE | earth_crew; excavator; truck |
| PK.20.10.D | 관로·집수정 굴착 / D구역 | 0d | 2026-10-06 | 2026-10-07 | PK.20.05.SITE | earth_crew; excavator; truck |
| PK.20.30 | **집수정·우수관 연계 시공** | 0d | 2026-10-07 | 2026-10-09 |  |  |
| PK.20.30.SITE | 집수정·우수관 연계 시공 / 전체 | 0d | 2026-10-07 | 2026-10-09 | PK.20.10.A, PK.20.10.B, PK.20.10.C, PK.20.10.D | earth_crew; excavator; inspector |
| PK.20.40 | **관망 전체 관저고·구배 검사** | 0d | 2026-10-09 | 2026-10-12 |  |  |
| PK.20.40.SITE | 관망 전체 관저고·구배 검사 / 전체 | 0d | 2026-10-09 | 2026-10-12 | PK.20.30.SITE | inspector |
| PK.20.50 | **되메우기·다짐** | 0d | 2026-10-12 | 2026-10-14 |  |  |
| PK.20.50.A | 되메우기·다짐 / A구역 | 0d | 2026-10-12 | 2026-10-12 | PK.20.40.SITE | earth_crew; excavator; truck |
| PK.20.50.B | 되메우기·다짐 / B구역 | 0d | 2026-10-14 | 2026-10-14 | PK.20.40.SITE | earth_crew; excavator; truck |
| PK.20.50.C | 되메우기·다짐 / C구역 | 0d | 2026-10-14 | 2026-10-14 | PK.20.40.SITE | earth_crew; excavator; truck |
| PK.20.50.D | 되메우기·다짐 / D구역 | 0d | 2026-10-14 | 2026-10-14 | PK.20.40.SITE | earth_crew; excavator; truck |
| PK.30 | **시설기초·경계석** | 0d | 2026-10-12 | 2026-10-16 |  |  |
| PK.30.10 | **휴게시설 기초** | 0d | 2026-10-12 | 2026-10-15 |  |  |
| PK.30.10.A | 휴게시설 기초 / A구역 | 0d | 2026-10-12 | 2026-10-12 | PK.20.50.A | earth_crew; excavator; truck |
| PK.30.10.C | 휴게시설 기초 / C구역 | 0d | 2026-10-14 | 2026-10-14 | PK.20.50.C | earth_crew; excavator; truck |
| PK.30.10.D | 휴게시설 기초 / D구역 | 0d | 2026-10-14 | 2026-10-15 | PK.20.50.D | earth_crew; excavator; truck |

Notes:
- PK.10.10.SITE: P2 작업 SITE_strip / 작업량 300.0 m3
- PK.10.20.SITE: P2 작업 SITE_grade / 작업량 193.693239 m3
- PK.20.05.SITE: P2 작업 SITE_survey / 작업량 1 ea
- PK.20.10.A: P2 작업 A_trench / 작업량 4.3625 m3
- PK.20.10.B: P2 작업 B_trench / 작업량 8.75 m3
- PK.20.10.C: P2 작업 C_trench / 작업량 4.3625 m3
- PK.20.10.D: P2 작업 D_trench / 작업량 12.1625 m3
- PK.20.30.SITE: P2 작업 SITE_drainage / 작업량 83 m
- PK.20.40.SITE: P2 작업 SITE_draincheck / 작업량 1 ea
- PK.20.50.A: P2 작업 A_backfill / 작업량 2.894361 m3
- PK.20.50.B: P2 작업 B_backfill / 작업량 6.093681 m3
- PK.20.50.C: P2 작업 C_backfill / 작업량 2.894361 m3
- PK.20.50.D: P2 작업 D_backfill / 작업량 8.582042 m3
- PK.30.10.A: P2 작업 A_foundation / 작업량 0.461073 m3
- PK.30.10.C: P2 작업 C_foundation / 작업량 0.153691 m3
- PK.30.10.D: P2 작업 D_foundation / 작업량 2.093802 m3

| ID | Activity | Duration | Start | Finish | Predecessors | Resources |
| --- | --- | --- | --- | --- | --- | --- |
| PK.30.20 | **화강석 경계석 설치** | 0d | 2026-10-12 | 2026-10-16 |  |  |
| PK.30.20.A | 화강석 경계석 설치 / A구역 | 0d | 2026-10-12 | 2026-10-12 | PK.20.50.A, PK.30.10.A | crew_special; crew_general; excavator |
| PK.30.20.B | 화강석 경계석 설치 / B구역 | 0d | 2026-10-15 | 2026-10-15 | PK.20.50.B | crew_special; crew_general; excavator |
| PK.30.20.C | 화강석 경계석 설치 / C구역 | 0d | 2026-10-15 | 2026-10-16 | PK.20.50.C, PK.30.10.C | crew_special; crew_general; excavator |
| PK.30.20.D | 화강석 경계석 설치 / D구역 | 0d | 2026-10-16 | 2026-10-16 | PK.20.50.D, PK.30.10.D | crew_special; crew_general; excavator |
| PK.40 | **포장공** | 0d | 2026-10-14 | 2026-11-09 |  |  |
| PK.40.10 | **쇄석 포장기층** | 0d | 2026-10-14 | 2026-11-06 |  |  |
| PK.40.10.A | 쇄석 포장기층 / A구역 | 0d | 2026-10-14 | 2026-10-14 | PK.30.20.A, PK.50.30.A | crew_paver; crew_special; crew_general |
| PK.40.10.B | 쇄석 포장기층 / B구역 | 0d | 2026-10-22 | 2026-10-23 | PK.30.20.B, PK.50.30.B | crew_paver; crew_special; crew_general |
| PK.40.10.C | 쇄석 포장기층 / C구역 | 0d | 2026-11-03 | 2026-11-03 | PK.30.20.C, PK.50.30.C | crew_paver; crew_special; crew_general |
| PK.40.10.D | 쇄석 포장기층 / D구역 | 0d | 2026-11-05 | 2026-11-06 | PK.30.20.D, PK.50.30.D, PK.60.20.D | crew_paver; crew_special; crew_general |
| PK.40.20 | **포장 기층 검사** | 0d | 2026-10-14 | 2026-11-06 |  |  |
| PK.40.20.A | 포장 기층 검사 / A구역 | 0d | 2026-10-14 | 2026-10-15 | PK.40.10.A | inspector |
| PK.40.20.B | 포장 기층 검사 / B구역 | 0d | 2026-10-23 | 2026-10-23 | PK.40.10.B | inspector |
| PK.40.20.C | 포장 기층 검사 / C구역 | 0d | 2026-11-03 | 2026-11-03 | PK.40.10.C | inspector |
| PK.40.20.D | 포장 기층 검사 / D구역 | 0d | 2026-11-06 | 2026-11-06 | PK.40.10.D | inspector |
| PK.40.30 | **모래·콘크리트블록 포장** | 0d | 2026-10-15 | 2026-11-09 |  |  |
| PK.40.30.A | 모래·콘크리트블록 포장 / A구역 | 0d | 2026-10-15 | 2026-10-15 | PK.40.20.A | crew_paver; crew_special; crew_general; excavator; plate_compactor |
| PK.40.30.B | 모래·콘크리트블록 포장 / B구역 | 0d | 2026-10-23 | 2026-10-26 | PK.40.20.B | crew_paver; crew_special; crew_general; excavator; plate_compactor |
| PK.40.30.C | 모래·콘크리트블록 포장 / C구역 | 0d | 2026-11-05 | 2026-11-05 | PK.40.20.C | crew_paver; crew_special; crew_general; excavator; plate_compactor |
| PK.40.30.D | 모래·콘크리트블록 포장 / D구역 | 0d | 2026-11-06 | 2026-11-09 | PK.40.20.D | crew_paver; crew_special; crew_general; excavator; plate_compactor |
| PK.50 | **식재공** | 0d | 2026-10-12 | 2026-11-17 |  |  |
| PK.50.20 | **식재기반 정비** | 0d | 2026-10-12 | 2026-11-02 |  |  |
| PK.50.20.A | 식재기반 정비 / A구역 | 0d | 2026-10-12 | 2026-10-14 | PK.30.20.A | excavator; crew_landscaper; crew_general |
| PK.50.20.B | 식재기반 정비 / B구역 | 0d | 2026-10-21 | 2026-10-22 | PK.30.20.B | excavator; crew_landscaper; crew_general |
| PK.50.20.C | 식재기반 정비 / C구역 | 0d | 2026-10-22 | 2026-10-23 | PK.30.20.C | excavator; crew_landscaper; crew_general |
| PK.50.20.D | 식재기반 정비 / D구역 | 0d | 2026-10-30 | 2026-11-02 | PK.30.20.D | excavator; crew_landscaper; crew_general |

Notes:
- PK.30.20.A: P2 작업 A_curb / 작업량 62.0 m
- PK.30.20.B: P2 작업 B_curb / 작업량 50.0 m
- PK.30.20.C: P2 작업 C_curb / 작업량 70.0 m
- PK.30.20.D: P2 작업 D_curb / 작업량 74.0 m
- PK.40.10.A: P2 작업 A_subbase / 작업량 80.0 m2
- PK.40.10.B: P2 작업 B_subbase / 작업량 50.0 m2
- PK.40.10.C: P2 작업 C_subbase / 작업량 96.0 m2
- PK.40.10.D: P2 작업 D_subbase / 작업량 132.0 m2
- PK.40.20.A: P2 작업 A_pavecheck / 작업량 1 ea
- PK.40.20.B: P2 작업 B_pavecheck / 작업량 1 ea
- PK.40.20.C: P2 작업 C_pavecheck / 작업량 1 ea
- PK.40.20.D: P2 작업 D_pavecheck / 작업량 1 ea
- PK.40.30.A: P2 작업 A_finish / 작업량 80.0 m2
- PK.40.30.B: P2 작업 B_finish / 작업량 50.0 m2
- PK.40.30.C: P2 작업 C_finish / 작업량 96.0 m2
- PK.40.30.D: P2 작업 D_finish / 작업량 132.0 m2
- PK.50.20.A: P2 작업 A_soil / 작업량 410.7 m2
- PK.50.20.B: P2 작업 B_soil / 작업량 442.5 m2
- PK.50.20.C: P2 작업 C_soil / 작업량 393.5225 m2
- PK.50.20.D: P2 작업 D_soil / 작업량 356.9225 m2

| ID | Activity | Duration | Start | Finish | Predecessors | Resources |
| --- | --- | --- | --- | --- | --- | --- |
| PK.50.30 | **교목 식재(구덩이 포함)** | 0d | 2026-10-14 | 2026-11-03 |  |  |
| PK.50.30.A | 교목 식재(구덩이 포함) / A구역 | 0d | 2026-10-14 | 2026-10-14 | PK.50.20.A | crew_landscaper; crew_general; excavator |
| PK.50.30.B | 교목 식재(구덩이 포함) / B구역 | 0d | 2026-10-22 | 2026-10-22 | PK.50.20.B | crew_landscaper; crew_general; excavator |
| PK.50.30.C | 교목 식재(구덩이 포함) / C구역 | 0d | 2026-11-02 | 2026-11-03 | PK.50.20.C | crew_landscaper; crew_general; excavator |
| PK.50.30.D | 교목 식재(구덩이 포함) / D구역 | 0d | 2026-11-03 | 2026-11-03 | PK.50.20.D | crew_landscaper; crew_general; excavator |
| PK.50.40 | **관목 식재** | 0d | 2026-10-15 | 2026-11-13 |  |  |
| PK.50.40.A | 관목 식재 / A구역 | 0d | 2026-10-15 | 2026-10-19 | PK.40.30.A | crew_landscaper; crew_general |
| PK.50.40.B | 관목 식재 / B구역 | 0d | 2026-10-26 | 2026-10-29 | PK.40.30.B | crew_landscaper; crew_general |
| PK.50.40.C | 관목 식재 / C구역 | 0d | 2026-11-05 | 2026-11-09 | PK.40.30.C | crew_landscaper; crew_general |
| PK.50.40.D | 관목 식재 / D구역 | 0d | 2026-11-12 | 2026-11-13 | PK.40.30.D | crew_landscaper; crew_general |
| PK.50.50 | **평떼 잔디붙임** | 0d | 2026-10-19 | 2026-11-17 |  |  |
| PK.50.50.A | 평떼 잔디붙임 / A구역 | 0d | 2026-10-19 | 2026-10-21 | PK.40.30.A | crew_landscaper; crew_general |
| PK.50.50.B | 평떼 잔디붙임 / B구역 | 0d | 2026-10-29 | 2026-10-30 | PK.40.30.B | crew_landscaper; crew_general |
| PK.50.50.C | 평떼 잔디붙임 / C구역 | 0d | 2026-11-09 | 2026-11-11 | PK.40.30.C | crew_landscaper; crew_general |
| PK.50.50.D | 평떼 잔디붙임 / D구역 | 0d | 2026-11-13 | 2026-11-17 | PK.40.30.D | crew_landscaper; crew_general |
| PK.50.60 | **수목 하부 멀칭** | 0d | 2026-10-21 | 2026-11-11 |  |  |
| PK.50.60.A | 수목 하부 멀칭 / A구역 | 0d | 2026-10-21 | 2026-10-21 | PK.40.30.A | crew_landscaper; crew_general |
| PK.50.60.B | 수목 하부 멀칭 / B구역 | 0d | 2026-10-30 | 2026-10-30 | PK.40.30.B | crew_landscaper; crew_general |
| PK.50.60.C | 수목 하부 멀칭 / C구역 | 0d | 2026-11-11 | 2026-11-11 | PK.40.30.C | crew_landscaper; crew_general |
| PK.50.60.D | 수목 하부 멀칭 / D구역 | 0d | 2026-11-11 | 2026-11-11 | PK.40.30.D | crew_landscaper; crew_general |
| PK.60 | **휴게시설공** | 0d | 2026-10-21 | 2026-11-12 |  |  |
| PK.60.10 | **벤치 설치** | 0d | 2026-10-21 | 2026-11-12 |  |  |
| PK.60.10.A | 벤치 설치 / A구역 | 0d | 2026-10-21 | 2026-10-21 | PK.30.10.A FS+24h, PK.40.30.A | crew_landscaper; crew_general |
| PK.60.10.C | 벤치 설치 / C구역 | 0d | 2026-11-11 | 2026-11-11 | PK.30.10.C FS+24h, PK.40.30.C | crew_landscaper; crew_general |
| PK.60.10.D | 벤치 설치 / D구역 | 0d | 2026-11-11 | 2026-11-12 | PK.30.10.D FS+24h, PK.40.30.D | crew_landscaper; crew_general |

Notes:
- PK.50.30.A: P2 작업 A_trees / 작업량 4 ea
- PK.50.30.B: P2 작업 B_trees / 작업량 6 ea
- PK.50.30.C: P2 작업 C_trees / 작업량 2 ea
- PK.50.30.D: P2 작업 D_trees / 작업량 4 ea
- PK.50.40.A: P2 작업 A_shrubs / 작업량 138 ea
- PK.50.40.B: P2 작업 B_shrubs / 작업량 221 ea
- PK.50.40.C: P2 작업 C_shrubs / 작업량 181 ea
- PK.50.40.D: P2 작업 D_shrubs / 작업량 137 ea
- PK.50.50.A: P2 작업 A_turf / 작업량 286.004072 m2
- PK.50.50.B: P2 작업 B_turf / 작업량 275.214236 m2
- PK.50.50.C: P2 작업 C_turf / 작업량 266.161425 m2
- PK.50.50.D: P2 작업 D_turf / 작업량 274.608895 m2
- PK.50.60.A: P2 작업 A_mulch / 작업량 7.057234 m2
- PK.50.60.B: P2 작업 B_mulch / 작업량 10.585851 m2
- PK.50.60.C: P2 작업 C_mulch / 작업량 3.528617 m2
- PK.50.60.D: P2 작업 D_mulch / 작업량 7.057234 m2
- PK.60.10.A: P2 작업 A_bench / 작업량 3 ea
- PK.60.10.C: P2 작업 C_bench / 작업량 1 ea
- PK.60.10.D: P2 작업 D_bench / 작업량 2 ea

| ID | Activity | Duration | Start | Finish | Predecessors | Resources |
| --- | --- | --- | --- | --- | --- | --- |
| PK.60.20 | **퍼걸러 설치** | 0d | 2026-11-03 | 2026-11-05 |  |  |
| PK.60.20.D | 퍼걸러 설치 / D구역 | 0d | 2026-11-03 | 2026-11-05 | PK.30.10.D FS+24h | excavator; crew_landscaper; crew_general |
| PK.70 | **복구·준공검사** | 0d | 2026-10-21 | 2026-11-18 |  |  |
| PK.70.10 | **구역 마무리 검사** | 0d | 2026-10-21 | 2026-11-17 |  |  |
| PK.70.10.A | 구역 마무리 검사 / A구역 | 0d | 2026-10-21 | 2026-10-22 | PK.50.40.A, PK.50.50.A, PK.50.60.A, PK.60.10.A | inspector |
| PK.70.10.B | 구역 마무리 검사 / B구역 | 0d | 2026-10-30 | 2026-11-02 | PK.50.40.B, PK.50.50.B, PK.50.60.B | inspector |
| PK.70.10.C | 구역 마무리 검사 / C구역 | 0d | 2026-11-11 | 2026-11-12 | PK.50.40.C, PK.50.50.C, PK.50.60.C, PK.60.10.C | inspector |
| PK.70.10.D | 구역 마무리 검사 / D구역 | 0d | 2026-11-17 | 2026-11-17 | PK.50.40.D, PK.50.50.D, PK.50.60.D, PK.60.10.D, PK.60.20.D | inspector |
| PK.70.20 | **임시동선 복구** | 0d | 2026-11-17 | 2026-11-17 |  |  |
| PK.70.20.SITE | 임시동선 복구 / 전체 | 0d | 2026-11-17 | 2026-11-17 | PK.70.10.A, PK.70.10.B, PK.70.10.C, PK.70.10.D | earth_crew |
| PK.70.30 | **준공검사** | 0d | 2026-11-17 | 2026-11-18 |  |  |
| PK.70.30.SITE | 준공검사 / 전체 | 0d | 2026-11-17 | 2026-11-18 | PK.70.20.SITE | inspector |

Notes:
- PK.60.20.D: P2 작업 D_pergola / 작업량 1 ea
- PK.70.10.A: P2 작업 A_check / 작업량 1 ea
- PK.70.10.B: P2 작업 B_check / 작업량 1 ea
- PK.70.10.C: P2 작업 C_check / 작업량 1 ea
- PK.70.10.D: P2 작업 D_check / 작업량 1 ea
- PK.70.20.SITE: P2 작업 RESTORE / 작업량 1 ea
- PK.70.30.SITE: P2 작업 HANDOVER / 작업량 1 ea
